# WebAgenda

Schedule from MS Project, 2010-01-15 to 2010-04-08, A marks actual dates.
SAIT

## Calendars

- Standard: Mon-Fri 08:00-12:00, 13:00-17:00; Sat-Sun off.

## Resources

| Resource |
| --- |
| M H |
| D K |
| D W |
| N H |

## Schedule

| ID | WBS | Task | Type | Duration | Start | Finish | Predecessors | Complete | Remaining | Baseline start | Baseline finish | Baseline duration | Total slack | Free slack | Constraint | Resources | Work | Actual work |
| --- | --- | --- | --- | --- | --- | --- | --- | --- | --- | --- | --- | --- | --- | --- | --- | --- | --- | --- |
| 1 | 1 | **Documentation** |  | 60d? | 2010-01-15 A | 2010-04-08 |  | 85% | 8.78d? | 2010-01-15 | 2010-04-08 | 60d? | 0d |  |  |  | 2504h | 2120h |
| 2 | 1.1 | Documentation Creation (Ongoing) |  | 60d? | 2010-01-15 A | 2010-04-08 |  | 80% | 12d? | 2010-01-15 | 2010-04-08 | 60d? | 0d |  | start no earlier than 2010-01-15 | M H; D W; D K; N H | 1920h | 1536h |
| 3 | 1.2 | Team Charter |  | 5d? | 2010-01-19 A | 2010-01-25 A |  | 100% |  | 2010-01-19 | 2010-01-25 | 5d? |  |  | start no earlier than 2010-01-19 | M H; D W; D K; N H | 160h | 160h |
| 4 | 1.3 | Initial Gantt Chart |  | 5d? | 2010-01-19 A | 2010-01-25 A |  | 100% |  | 2010-01-19 | 2010-01-25 | 5d? |  |  | start no earlier than 2010-01-19 | D W | 40h | 40h |
| 5 | 1.4 | Design Document |  | 12d? | 2010-01-19 A | 2010-02-03 A |  | 100% |  | 2010-01-19 | 2010-02-03 | 12d? |  |  | start no earlier than 2010-01-19 | M H; D W; D K; N H | 384h | 384h |
| 6 | 2 | **Database** |  | 19d? | 2010-01-18 A | 2010-02-11 |  | 94% | 1.19d? | 2010-01-18 | 2010-02-11 | 19d? | 40d |  |  |  | 240h | 228h |
| 7 | 2.1 | **Database Design** |  | 6d? | 2010-01-18 A | 2010-01-25 A |  | 100% |  | 2010-01-18 | 2010-01-25 | 6d? |  |  |  |  | 136h | 136h |
| 8 | 2.1.1 | Finalize Design |  | 6d? | 2010-01-18 A | 2010-01-25 A |  | 100% |  | 2010-01-18 | 2010-01-25 | 6d? |  |  | finish no earlier than 2010-01-25 | N H; D W | 96h | 96h |
| 9 | 2.1.2 | Table/Attribute Sizes |  | 5d? | 2010-01-19 A | 2010-01-25 A |  | 100% |  | 2010-01-19 | 2010-01-25 | 5d? |  |  | start no earlier than 2010-01-19 | N H | 40h | 40h |
| 10 | 2.1.3 | Design Complete | milestone | 0d | 2010-01-25 A | 2010-01-25 A | 9, 8 | 100% |  | 2010-01-25 | 2010-01-25 | 0d |  |  | finish no earlier than 2010-01-25 |  |  |  |
| 11 | 2.2 | **Test Data** |  | 13d? | 2010-01-26 A | 2010-02-11 |  | 88% | 1.5d? | 2010-01-26 | 2010-02-11 | 13d? | 40d |  |  |  | 104h | 92h |
| 12 | 2.2.1 | Data Generated |  | 5d? | 2010-01-26 A | 2010-02-01 A | 10 | 100% |  | 2010-01-26 | 2010-02-01 | 5d? |  |  | start no earlier than 2010-01-26 | D W | 40h | 40h |
| 13 | 2.2.2 | Implemented |  | 5d? | 2010-02-02 A | 2010-02-08 A | 12 | 100% |  | 2010-02-02 | 2010-02-08 | 5d? |  |  |  | D W | 40h | 40h |
| 14 | 2.2.3 | System Backups |  | 3d? | 2010-02-09 A | 2010-02-11 | 13 | 50% | 1.5d? | 2010-02-09 | 2010-02-11 | 3d? | 40d |  | start no earlier than 2010-02-09 | D W | 24h | 12h |
| 15 | 2.3 | Test DB Ready | milestone | 0d | 2010-02-11 | 2010-02-11 | 13 |  |  | 2010-02-11 | 2010-02-11 | 0d | 27d | 22d | finish no earlier than 2010-02-11 |  |  |  |
| 16 | 3 | **API** |  | 35d? | 2010-01-26 A | 2010-03-15 |  | 44% | 19.5d? | 2010-01-26 | 2010-03-15 | 35d? | 18d |  |  |  | 3000h | 1208h |
| 17 | 3.1 | **Classes** |  | 35d? | 2010-01-26 A | 2010-03-15 |  | 44% | 19.5d? | 2010-01-26 | 2010-03-15 | 35d? | 18d |  |  |  | 3000h | 1208h |
| 18 | 3.1.1 | **Data Objects** |  | 5d? | 2010-01-26 A | 2010-02-01 A |  | 100% |  | 2010-01-26 | 2010-02-01 | 5d? |  |  |  |  | 80h | 80h |
| 19 | 3.1.1.1 | Data Classes |  | 5d? | 2010-01-26 A | 2010-02-01 A | 8 | 100% |  | 2010-01-26 | 2010-02-01 | 5d? |  |  | start no earlier than 2010-01-26 | D W; D K | 80h | 80h |
| 20 | 3.1.2 | **Connections** |  | 5d? | 2010-01-26 A | 2010-02-01 A |  | 100% |  | 2010-01-26 | 2010-02-01 | 5d? |  |  |  |  | 40h | 40h |
| 21 | 3.1.2.1 | Design/Code |  | 5d? | 2010-01-26 A | 2010-02-01 A |  | 100% |  | 2010-01-26 | 2010-02-01 | 5d? |  |  | start no earlier than 2010-01-26 | D K | 40h | 40h |
| 22 | 3.1.3 | **Brokers** |  | 11d? | 2010-02-01 A | 2010-02-16 |  | 98% | 0.27d? | 2010-02-02 | 2010-02-15 | 10d? | 0d |  |  |  | 1120h | 1088h |
| 23 | 3.1.3.1 | Employee |  | 10d? | 2010-02-02 A | 2010-02-15 A | 19 | 100% |  | 2010-02-02 | 2010-02-15 | 10d? |  |  |  | D W; D K | 160h | 160h |
| 24 | 3.1.3.2 | Permissions |  | 10d? | 2010-02-02 A | 2010-02-15 A | 19 | 100% |  | 2010-02-02 | 2010-02-15 | 10d? |  |  | start no earlier than 2010-02-02 | D W; D K | 160h | 160h |
| 25 | 3.1.3.3 | Position |  | 10d? | 2010-02-02 A | 2010-02-15 A | 19 | 100% |  | 2010-02-02 | 2010-02-15 | 10d? |  |  | start no earlier than 2010-02-02 | D W; D K | 160h | 160h |
| 26 | 3.1.3.4 | Location |  | 10d? | 2010-02-02 A | 2010-02-15 A | 19 | 100% |  | 2010-02-02 | 2010-02-15 | 10d? |  |  | start no earlier than 2010-02-02 | D W; D K | 160h | 160h |
| 27 | 3.1.3.5 | ScheduleTemplate |  | 10d? | 2010-02-02 A | 2010-02-15 | 19 | 90% | 1d? | 2010-02-02 | 2010-02-15 | 10d? | 0d |  | start no earlier than 2010-02-02 | D W; D K | 160h | 144h |
| 28 | 3.1.3.6 | Schedule |  | 10d? | 2010-02-02 A | 2010-02-15 | 19 | 90% | 1d? | 2010-02-02 | 2010-02-15 | 10d? | 0d |  | start no earlier than 2010-02-02 | D W; D K | 160h | 144h |
| 29 | 3.1.3.7 | Skill |  | 11d? | 2010-02-01 A | 2010-02-16 A |  | 100% |  |  |  |  |  |  | start no earlier than 2010-02-01 |  |  |  |
| 30 | 3.1.3.8 | Notification |  | 10d? | 2010-02-02 A | 2010-02-15 A | 19 | 100% |  | 2010-02-02 | 2010-02-15 | 10d? |  |  | start no earlier than 2010-02-02 | D W; D K | 160h | 160h |
| 31 | 3.1.4 | Brokers Complete | milestone | 0d | 2010-02-15 | 2010-02-15 | 23, 24, 28, 27, 25, 26, 30 |  |  | 2010-02-15 | 2010-02-15 | 0d | 0d |  | finish no earlier than 2010-02-08 |  |  |  |

| ID | WBS | Task | Type | Duration | Start | Finish | Predecessors | Complete | Remaining | Baseline start | Baseline finish | Baseline duration | Total slack | Free slack | Constraint | Resources | Work | Actual work |
| --- | --- | --- | --- | --- | --- | --- | --- | --- | --- | --- | --- | --- | --- | --- | --- | --- | --- | --- |
| 32 | 3.1.5 | **Widgets** |  | 20d? | 2010-02-16 | 2010-03-15 |  |  |  | 2010-02-16 | 2010-03-15 | 20d? | 0d |  |  |  | 1760h |  |
| 33 | 3.1.5.1 | Schedule |  | 20d? | 2010-02-16 | 2010-03-15 | 31 |  |  | 2010-02-16 | 2010-03-15 | 20d? | 0d |  | start no earlier than 2010-02-16 | D W; D K | 320h |  |
| 34 | 3.1.5.2 | Notifications |  | 20d? | 2010-02-16 | 2010-03-15 | 31 |  |  | 2010-02-16 | 2010-03-15 | 20d? | 0d |  | start no earlier than 2010-02-16 | M H; N H | 320h |  |
| 35 | 3.1.5.3 | Settings |  | 10d? | 2010-02-16 | 2010-03-01 | 31 |  |  | 2010-02-16 | 2010-03-01 | 10d? | 10d |  | start no earlier than 2010-02-16 | D W; D K | 160h |  |
| 36 | 3.1.5.4 | Employees |  | 10d? | 2010-02-23 | 2010-03-08 | 31 |  |  | 2010-02-23 | 2010-03-08 | 10d? | 5d |  | start no earlier than 2010-02-23 | M H; N H | 160h |  |
| 37 | 3.1.5.5 | Reports |  | 10d? | 2010-02-23 | 2010-03-08 | 31 |  |  | 2010-02-23 | 2010-03-08 | 10d? | 5d |  | start no earlier than 2010-02-23 | M H; N H | 160h |  |
| 38 | 3.1.5.6 | Export |  | 10d? | 2010-02-23 | 2010-03-08 | 31 |  |  | 2010-02-23 | 2010-03-08 | 10d? | 5d |  | start no earlier than 2010-02-23 | D W; D K | 160h |  |
| 39 | 3.1.5.7 | Help |  | 10d? | 2010-02-23 | 2010-03-08 | 31 |  |  | 2010-02-23 | 2010-03-08 | 10d? | 5d |  | start no earlier than 2010-02-23 | D W; D K | 160h |  |
| 40 | 3.1.5.8 | Mail |  | 10d? | 2010-03-01 | 2010-03-12 | 31 |  |  | 2010-03-01 | 2010-03-12 | 10d? | 1d |  | start no earlier than 2010-03-01 | M H; N H | 160h |  |
| 41 | 3.1.5.9 | Quick Links |  | 5d? | 2010-03-02 | 2010-03-08 | 31 |  |  | 2010-03-02 | 2010-03-08 | 5d? | 5d |  | start no earlier than 2010-03-02 | M H; N H | 80h |  |
| 42 | 3.1.5.10 | Calendar |  | 5d? | 2010-03-02 | 2010-03-08 | 31 |  |  | 2010-03-02 | 2010-03-08 | 5d? | 23d |  | start no earlier than 2010-03-02 | D W; D K | 80h |  |
| 43 | 3.1.6 | Widgets Complete | milestone | 0d | 2010-03-15 | 2010-03-15 | 33, 34, 35, 40, 36, 37, 38, 39, 41 |  |  | 2010-03-15 | 2010-03-15 | 0d | 0d |  |  |  |  |  |
| 44 | 3.2 | API Complete | milestone | 0d | 2010-03-15 A | 2010-03-15 | 43 | 3% | 0d | 2010-03-15 | 2010-03-15 | 0d | 6.4d | 0d |  |  |  |  |
| 45 | 4 | **Interface / UI Design** |  | 40d? | 2010-01-19 A | 2010-03-15 |  | 78% | 8.67d? | 2010-01-19 | 2010-03-15 | 40d? | 6.4d |  |  |  | 1280h | 976h |
| 46 | 4.1 | Screen Tree |  | 5d? | 2010-01-19 A | 2010-01-25 A |  | 100% |  | 2010-01-19 | 2010-01-25 | 5d? |  |  | finish no earlier than 2010-01-25 | M H; N H | 80h | 80h |
| 47 | 4.2 | Coding |  | 35d? | 2010-01-26 A | 2010-03-15 | 46 | 80% | 7d? | 2010-01-26 | 2010-03-15 | 35d? | 5d | 0d | finish no earlier than 2010-03-15 | M H; N H | 560h | 448h |
| 48 | 4.3 | Integration |  | 20d? | 2010-02-16 A | 2010-03-15 |  | 70% | 6d? | 2010-02-16 | 2010-03-15 | 20d? | 6.4d | 0d | start no earlier than 2010-02-16 | M H; D W; D K; N H | 640h | 448h |
| 49 | 4.4 | Interface Compete | milestone | 0d | 2010-03-15 | 2010-03-15 | 46, 47, 48 |  |  |  |  |  | 5d | 0d |  |  |  |  |
| 50 | 5 | **Installer** |  | 8d? | 2010-03-16 A | 2010-03-25 |  | 18% | 6.6d? | 2010-03-16 | 2010-03-25 | 8d? | 5d |  |  |  | 64h | 11.2h |
| 51 | 5.1 | Part 1 |  | 2d? | 2010-03-16 A | 2010-03-17 | 15, 44, 49 | 20% | 1.6d? | 2010-03-16 | 2010-03-17 | 2d? | 6d | 0d |  | D K | 16h | 3.2h |
| 52 | 5.2 | Part 2 |  | 2d? | 2010-03-18 | 2010-03-19 | 51 |  |  | 2010-03-18 | 2010-03-19 | 2d? | 5d | 0d |  | D K | 16h |  |
| 53 | 5.3 | Part 3 |  | 2d? | 2010-03-22 | 2010-03-23 | 52 |  |  | 2010-03-22 | 2010-03-23 | 2d? | 5d | 0d |  | D K | 16h |  |
| 54 | 5.4 | Licensing |  | 2d | 2010-03-24 A | 2010-03-25 | 53 | 50% | 1d | 2010-03-24 | 2010-03-25 | 2d | 5d | 0d |  | D K | 16h | 8h |
| 55 | 5.5 | Installer Complete | milestone | 0d | 2010-03-25 | 2010-03-25 | 54 |  |  | 2010-03-25 | 2010-03-25 | 0d | 5d | 0d |  |  |  |  |

| ID | WBS | Task | Duration | Start | Finish | Predecessors | Complete | Remaining | Baseline start | Baseline finish | Baseline duration | Total slack | Constraint | Resources | Work | Actual work |
| --- | --- | --- | --- | --- | --- | --- | --- | --- | --- | --- | --- | --- | --- | --- | --- | --- |
| 56 | 6 | **System Testing** | 13d? | 2010-03-16 A | 2010-04-01 |  | 20% | 10.4d? | 2010-03-16 | 2010-04-01 | 13d? | 5d |  |  | 1120h | 224h |
| 57 | 6.1 | User Testing | 10d? | 2010-03-16 A | 2010-03-29 | 15, 44, 49 | 70% | 3d? | 2010-03-16 | 2010-03-29 | 10d? | 8d | start no earlier than 2010-03-16 | M H; D W; D K; N H | 320h | 224h |
| 58 | 6.2 | Load Testing | 10d? | 2010-03-16 | 2010-03-29 | 15, 44, 49 |  |  | 2010-03-16 | 2010-03-29 | 10d? | 8d | start no earlier than 2010-03-16 | M H; D W; D K; N H | 320h |  |
| 59 | 6.3 | Backup/Recovery Testing | 10d? | 2010-03-16 | 2010-03-29 | 15, 44, 49 |  |  | 2010-03-16 | 2010-03-29 | 10d? | 8d | start no earlier than 2010-03-16 | M H; D W; D K; N H | 320h |  |
| 60 | 6.4 | Installer Testing | 5d? | 2010-03-26 | 2010-04-01 | 55 |  |  | 2010-03-26 | 2010-04-01 | 5d? | 5d |  | M H; D W; D K; N H | 160h |  |
